How a schedule from an exported table changed from version to version. A marks actual dates.

## Version 1 (saved 2015-09-01)

Note of the change: added tasks

| ID | Task | Finish |
| --- | --- | --- |
| 150 | WP0: Coordination | 2018-01-01 |
| 3 | T0.0: Team building | 2016-01-28 |
| 151 | T0.1: Project management and communication | 2018-01-01 |
| 158 | T0.2: Collaboration and internal communication | 2018-01-01 |
| 4 | T0.3: Publications | 2018-01-01 |
| 1 | WP1: Model of emotional appraisal | 2017-12-28 |
| 5 | T1.0:Scientific sources review | 2016-04-21 |
| 12 | T1.1:Analysis | 2016-06-16 |
| 159 | WP1.1: Emotional appraisal prototype v.1 | 2016-12-29 |
| 13 | T1.1.0: Model development | 2016-08-11 |
| 14 | T1.1.1:Prototype development | 2016-11-03 |
| 15 | T1.1.2:Testing and experimenting | 2016-12-01 |
| 16 | T1.1.3:Analysis of results | 2016-12-29 |
| 133 | M1.1.4:Initial appraisal | 2016-12-30 |
| 162 | WP1.2 Emotional appraisal prototype v.2 | 2017-07-13 |
| 17 | T1.2.0: Model update | 2017-02-09 |
| 18 | T1.2.1: Prototype development | 2017-05-04 |
| 19 | T1.2.2: Testing and experiments | 2017-06-15 |
| 20 | T1.2.3: Analysis of results | 2017-07-13 |
| 137 | M1.2.4: Updated appraisal | 2017-07-14 |
| 165 | WP1.3 Emotional appraisal prototype v.3 | 2017-12-28 |
| 80 | T1.3.0: Model update | 2017-08-24 |
| 82 | T1.3.1: Prototype development | 2017-11-16 |
| 84 | T1.3.2: Testing and experiments | 2017-12-14 |
| 86 | T1.3.3: Analysis of results | 2017-12-28 |
| 141 | M1.3.4: Final appraisal | 2017-12-29 |
| 0 | WP2: Emotional simulation | 2017-06-01 |
| 30 | T2.0: Neuromodulation Architecture specification | 2016-01-29 |
| 47 | WP2.1: Dopamine | 2016-06-30 |
| 43 | T2.1.0: Basal ganglia simple model implementation | 2016-02-25 |
| 45 | T2.1.1: Basal ganglia with extended feedback loops | 2016-04-07 |
| 49 | T2.1.2: Basal ganglia with feedback loops and realistic number of neurons | 2016-06-30 |
| 142 | Dopamine prototype | 2016-07-01 |
| 51 | WP2.2: Serotonin (5HT) | 2016-12-01 |
| 53 | 5HT neuron/synapse | 2016-08-11 |
| 55 | 5HT pathway reduced number of neurons | 2016-09-08 |
| 79 | 5HT pathway relistic scale | 2016-12-01 |
| 146 | M2.2: 5HT + DA prototype | 2016-12-02 |
| 57 | WP2.3: Noradrenaline | 2017-06-01 |
| 59 | T2.3.0: Noradrenaline neuron/synapse model | 2016-12-29 |
| 61 | T2.3.1: Noradrenaline neuron/synapse | 2017-02-09 |
| 63 | T2.3.2: Noradrenaline projections reduced number of neurons | 2017-03-09 |
| 65 | T2.3.3: Noradrenaline projections realistic scales | 2017-06-01 |
| 149 | M2.3: NA + 5HT + DA prototype | 2017-06-02 |
| 94 | WP 3: Instinctive reactions | 2017-08-24 |
| 95 | WP 4: Learned reactions | 2018-01-01 |
| 96 | WP 5: Deliberative thinking | 2018-01-01 |

## Version 2 (saved 2015-09-01)

Note of the change: added some tasks

Last finish stays 2018-01-01.

Changed:

| ID | Task | Finish | Other |
| --- | --- | --- | --- |
| 30 | T2.0: Neuromodulation Architecture specification | 2016-01-29 → 2016-02-25 (+27d) |  |
| 53 | T2.2.0: 5HT neuron/synapse |  | was named 5HT neuron/synapse |
| 55 | T2.2.1: 5HT pathway reduced number of neurons |  | was named 5HT pathway reduced number of neurons |
| 79 | T2.2.2: 5HT pathway relistic scale |  | was named 5HT pathway relistic scale |
| 94 | WP3: Instinctive reactions |  | was named WP 3: Instinctive reactions |
| 95 | WP4: Learned reactions |  | was named WP 4: Learned reactions |
| 96 | WP5: Deliberative thinking |  | was named WP 5: Deliberative thinking |
